# Baseline (Bid) – CPM

How a schedule from an IFC model changed from version to version. A marks actual dates.

## Version 1 (saved 2026-10-27)

Note of the change: Add Tongcheng warehouse BIM 3D/4D model for bid verification

| ID | Task | Duration | Start | Finish | Predecessors | Total float |
| --- | --- | --- | --- | --- | --- | --- |
| P0 | ยื่นราคา/อนุมัติจ้างงาน Preconstruction | 10d | 2026-11-05 | 2026-11-14 |  | 0d |
| P1 | สำรวจแนวเขตที่ดินและระดับเดิม (Topographic) | 4d | 2026-11-15 | 2026-11-18 | P0 | 2d |
| P3 | เจาะสำรวจดิน 3 หลุม x 30 ม. (SPT) | 7d | 2026-11-15 | 2026-11-21 | P0 | 0d |
| P2 | ถางป่า ขุดตอ ลอกหน้าดิน 0.20 ม. ระบายน้ำขัง | 15d | 2026-11-17 | 2026-12-01 | P1 SS+2d | 2d |
| P4 | ทดสอบห้องปฏิบัติการ + รายงานผลสำรวจดิน | 14d | 2026-11-22 | 2026-12-05 | P3 | 0d |
| P5 | สำรวจระดับหลังเคลียร์ (OGL) + ตารางดินถม | 2d | 2026-12-02 | 2026-12-03 | P2 | 2d |
| M0 | เซ็นสัญญางานหลัก / ส่ง Master schedule / Shop drawing | 6d | 2026-12-06 | 2026-12-11 | P4, P5 | 0d |
| M11 | Mobilization: รั้ว สำนักงานสนาม โรงเก็บ ไฟฟ้า-ประปาชั่วคราว | 8d | 2026-12-08 | 2026-12-15 | M0 SS+2d | 122d |
| M12 | วางผังอาคาร กริด 1-11/A-J ตั้งหมุด BM ±0.00 | 3d | 2026-12-12 | 2026-12-14 | M0 | 0d |
| M13 | ถมดินบดอัด 95% Std. Proctor + ลานทำงานปั้นจั่น | 22d | 2026-12-13 | 2027-01-03 | M12 SS+1d | 0d |
| M21A | ตอกเข็มอาคาร I35x360 + I26x103 (2 ปั้นจั่น) | 26d | 2026-12-25 | 2027-01-19 | M13 SS+12d | 0d |
| M21B | ตอกเข็มถังใต้ดิน I26x17 + หม้อแปลง I22x6 | 3d | 2027-01-20 | 2027-01-22 | M21A | 51d |
| M21C | ตอกเข็มพื้นถนนรอบอาคาร I22x249 | 14d | 2027-01-20 | 2027-02-02 | M21A | 28d |
| M21T | Dynamic Load Test 2 ต้น | 2d | 2027-01-04 | 2027-01-05 | M21A SS+10d | 101d |
| M22 | ขุดดิน ตัดหัวเข็ม ฐานราก F2P/F1P-1 | 18d | 2027-01-02 | 2027-01-19 | M21A SS+8d | 0d |
| M23 | เสาตอม่อ/เสา คสล. C1 0.30x0.50 ถึง +4.50 | 18d | 2027-01-08 | 2027-01-25 | M22 SS+6d | 0d |
| M24 | คานคอดิน B1 + Drop panel F1P 360 จุด + ทรายรองพื้น | 20d | 2027-01-12 | 2027-01-31 | M22 SS+10d | 20d |
| M26 | ถังเก็บน้ำใต้ดิน คสล. | 20d | 2027-01-23 | 2027-02-11 | M21B | 51d |
| M30 | ผลิตโครงเหล็ก (โรงงาน) เสา/โครงถัก/แป | 30d | 2026-12-22 | 2027-01-20 | M0 FS+10d | 25d |
| M31 | ติดตั้งเสาเหล็ก H250x175 บนหัวเสา คสล. | 8d | 2027-01-31 | 2027-02-07 | M23 FS+5d, M30 SS+15d | 0d |
| M32 | ยกติดตั้งโครงถัก 20 ชุด + ค้ำยัน | 16d | 2027-02-03 | 2027-02-18 | M31 SS+3d | 0d |
| M33 | ติดตั้งแปหลังคา/แปผนัง | 10d | 2027-02-09 | 2027-02-18 | M32 SS+6d | 0d |
| M34 | มุงหลังคาเมทัลชีท + ฉนวน + Jack roof + รางน้ำ | 18d | 2027-02-13 | 2027-03-02 | M33 SS+4d | 0d |
| M25 | เทพื้น S1 (6 โซน) + Floor hardener ใต้หลังคา | 24d | 2027-02-21 | 2027-03-16 | M24, M34 SS+8d | 0d |
| M36 | ผนังก่ออิฐ/ฉาบ ถึง +4.50 | 22d | 2027-03-01 | 2027-03-22 | M25 SS+8d | 0d |
| M37 | ผนังเมทัลชีท +5.20 ถึงหลังคา/จั่ว | 12d | 2027-02-19 | 2027-03-02 | M33 | 32d |
| M35 | ชั้นลอย F8 (โครงเหล็ก พื้น บันได) | 14d | 2027-03-03 | 2027-03-16 | M25 SS+10d | 18d |
| M39 | ห้อง MDB / ห้องประกอบ แนวกริด A | 18d | 2027-03-06 | 2027-03-23 | M36 SS+5d | 11d |
| M44 | อาคารประกอบ: ห้องน้ำ / ห้องเก็บสารเคมี | 25d | 2027-01-20 | 2027-02-13 | M22 | 49d |
| M38 | ประตูม้วน ประตู-หน้าต่าง ทาสี | 12d | 2027-03-23 | 2027-04-03 | M36 | 0d |
| M41 | ฐาน F1A 249 จุด รับพื้นถนน | 12d | 2027-02-03 | 2027-02-14 | M21C | 28d |
| M46 | รางระบายน้ำ คสล. พร้อมฝาปิด | 15d | 2027-02-07 | 2027-02-21 | M41 SS+4d | 41d |
| M45 | ฐานหม้อแปลง | 6d | 2027-01-26 | 2027-01-31 | M21B FS+3d | 62d |
| M42 | พื้นถนนรอบอาคาร S2 2,440 ตร.ม. | 20d | 2027-03-03 | 2027-03-22 | M41, M34 | 12d |
| M43 | ทางลาดขนส่ง 2 จุด | 6d | 2027-03-17 | 2027-03-22 | M42 SS+6d, M25 | 12d |
| M51 | ทดสอบระบบ ตรวจรับ แก้ไขงาน (Punch list) | 8d | 2027-04-04 | 2027-04-11 | M38, M42, M39, M35, M44, M43, M46, M37, M45, M26 | 0d |
| M52 | รื้อถอนสิ่งชั่วคราว ทำความสะอาด ส่งมอบ + As-built | 5d | 2027-04-12 | 2027-04-16 | M51 | 0d |

## Version 2 (saved 2026-10-27)

Note of the change: Set existing ground to ±0.00 and BOQ fill to 0.30 m

Last finish 2027-04-16 → 2027-04-10 (-6d).

Changed:

| ID | Task | Start | Finish | Duration | Predecessors | Other |
| --- | --- | --- | --- | --- | --- | --- |
| M13 | ถมดินบดอัดหนา 0.30 ม. (1,114 ลบ.ม.) + ลานทำงานปั้นจั่น |  | 2027-01-03 → 2026-12-18 (-16d) | 22d → 6d |  | was named ถมดินบดอัด 95% Std. Proctor + ลานทำงานปั้นจั่น |
| M21A | ตอกเข็มอาคาร I35x360 + I26x103 (2 ปั้นจั่น) | 2026-12-25 → 2026-12-19 (-6d) | 2027-01-19 → 2027-01-13 (-6d) |  | M13 SS+12d → M13 |  |
| M21B | ตอกเข็มถังใต้ดิน I26x17 + หม้อแปลง I22x6 | 2027-01-20 → 2027-01-14 (-6d) | 2027-01-22 → 2027-01-16 (-6d) |  |  |  |
| M21C | ตอกเข็มพื้นถนนรอบอาคาร I22x249 | 2027-01-20 → 2027-01-14 (-6d) | 2027-02-02 → 2027-01-27 (-6d) |  |  |  |
| M21T | Dynamic Load Test 2 ต้น | 2027-01-04 → 2026-12-29 (-6d) | 2027-01-05 → 2026-12-30 (-6d) |  |  |  |
| M22 | ขุดดิน ตัดหัวเข็ม ฐานราก F2P/F1P-1 | 2027-01-02 → 2026-12-27 (-6d) | 2027-01-19 → 2027-01-13 (-6d) |  |  |  |
| M23 | เสาตอม่อ/เสา คสล. C1 0.30x0.50 ถึง +4.50 | 2027-01-08 → 2027-01-02 (-6d) | 2027-01-25 → 2027-01-19 (-6d) |  |  |  |
| M24 | คานคอดิน B1 + Drop panel F1P 360 จุด + ทรายรองพื้น | 2027-01-12 → 2027-01-06 (-6d) | 2027-01-31 → 2027-01-25 (-6d) |  |  |  |
| M26 | ถังเก็บน้ำใต้ดิน คสล. | 2027-01-23 → 2027-01-17 (-6d) | 2027-02-11 → 2027-02-05 (-6d) |  |  |  |
| M31 | ติดตั้งเสาเหล็ก H250x175 บนหัวเสา คสล. | 2027-01-31 → 2027-01-25 (-6d) | 2027-02-07 → 2027-02-01 (-6d) |  |  |  |
| M32 | ยกติดตั้งโครงถัก 20 ชุด + ค้ำยัน | 2027-02-03 → 2027-01-28 (-6d) | 2027-02-18 → 2027-02-12 (-6d) |  |  |  |
| M33 | ติดตั้งแปหลังคา/แปผนัง | 2027-02-09 → 2027-02-03 (-6d) | 2027-02-18 → 2027-02-12 (-6d) |  |  |  |
| M34 | มุงหลังคาเมทัลชีท + ฉนวน + Jack roof + รางน้ำ | 2027-02-13 → 2027-02-07 (-6d) | 2027-03-02 → 2027-02-24 (-6d) |  |  |  |
| M25 | เทพื้น S1 (6 โซน) + Floor hardener ใต้หลังคา | 2027-02-21 → 2027-02-15 (-6d) | 2027-03-16 → 2027-03-10 (-6d) |  |  |  |
| M36 | ผนังก่ออิฐ/ฉาบ ถึง +4.50 | 2027-03-01 → 2027-02-23 (-6d) | 2027-03-22 → 2027-03-16 (-6d) |  |  |  |
| M37 | ผนังเมทัลชีท +5.20 ถึงหลังคา/จั่ว | 2027-02-19 → 2027-02-13 (-6d) | 2027-03-02 → 2027-02-24 (-6d) |  |  |  |
| M35 | ชั้นลอย F8 (โครงเหล็ก พื้น บันได) | 2027-03-03 → 2027-02-25 (-6d) | 2027-03-16 → 2027-03-10 (-6d) |  |  |  |
| M39 | ห้อง MDB / ห้องประกอบ แนวกริด A | 2027-03-06 → 2027-02-28 (-6d) | 2027-03-23 → 2027-03-17 (-6d) |  |  |  |
| M44 | อาคารประกอบ: ห้องน้ำ / ห้องเก็บสารเคมี | 2027-01-20 → 2027-01-14 (-6d) | 2027-02-13 → 2027-02-07 (-6d) |  |  |  |
| M38 | ประตูม้วน ประตู-หน้าต่าง ทาสี | 2027-03-23 → 2027-03-17 (-6d) | 2027-04-03 → 2027-03-28 (-6d) |  |  |  |
| M41 | ฐาน F1A 249 จุด รับพื้นถนน | 2027-02-03 → 2027-01-28 (-6d) | 2027-02-14 → 2027-02-08 (-6d) |  |  |  |
| M46 | รางระบายน้ำ คสล. พร้อมฝาปิด | 2027-02-07 → 2027-02-01 (-6d) | 2027-02-21 → 2027-02-15 (-6d) |  |  |  |
| M45 | ฐานหม้อแปลง | 2027-01-26 → 2027-01-20 (-6d) | 2027-01-31 → 2027-01-25 (-6d) |  |  |  |
| M42 | พื้นถนนรอบอาคาร S2 2,440 ตร.ม. | 2027-03-03 → 2027-02-25 (-6d) | 2027-03-22 → 2027-03-16 (-6d) |  |  |  |
| M43 | ทางลาดขนส่ง 2 จุด | 2027-03-17 → 2027-03-11 (-6d) | 2027-03-22 → 2027-03-16 (-6d) |  |  |  |
| M51 | ทดสอบระบบ ตรวจรับ แก้ไขงาน (Punch list) | 2027-04-04 → 2027-03-29 (-6d) | 2027-04-11 → 2027-04-05 (-6d) |  |  |  |
| M52 | รื้อถอนสิ่งชั่วคราว ทำความสะอาด ส่งมอบ + As-built | 2027-04-12 → 2027-04-06 (-6d) | 2027-04-16 → 2027-04-10 (-6d) |  |  |  |

## Version 3 (saved 2026-10-28)

Note of the change: Split piles into building, annex/other and road groups

Last finish 2027-04-10 → 2027-04-13 (+3d).

Changed:

| ID | Task | Start | Finish | Duration | Total float | Predecessors | Other |
| --- | --- | --- | --- | --- | --- | --- | --- |
| M21A | ตอกเข็มอาคาร: I35 ใต้พื้น 360 + I26 ฐาน F2P 92 (2 ปั้นจั่น) |  | 2027-01-13 → 2027-01-12 (-1d) | 26d → 25d |  |  | was named ตอกเข็มอาคาร I35x360 + I26x103 (2 ปั้นจั่น) |
| M21B | ตอกเข็มอาคารประกอบ/อื่นๆ: F1P-1 11, ถังใต้ดิน 17, หม้อแปลง 6, ฐานแนวเขต 16 | 2027-01-14 → 2027-01-13 (-1d) | 2027-01-16 → 2027-01-18 (+2d) | 3d → 6d | 51d → 44d |  | was named ตอกเข็มถังใต้ดิน I26x17 + หม้อแปลง I22x6 |
| M21C | ตอกเข็มพื้นถนนรอบอาคาร I22 249 ต้น (2 ปั้นจั่น) | 2027-01-14 → 2027-01-13 (-1d) | 2027-01-27 → 2027-01-26 (-1d) |  | 28d → 29d |  | was named ตอกเข็มพื้นถนนรอบอาคาร I22x249 |
| M26 | ถังเก็บน้ำใต้ดิน คสล. | 2027-01-17 → 2027-01-19 (+2d) | 2027-02-05 → 2027-02-07 (+2d) |  | 51d → 49d |  |  |
| M44 | อาคารประกอบ: ฐาน F1P-1 เสา คาน ห้องน้ำ / ห้องเก็บสารเคมี | 2027-01-14 → 2027-01-19 (+5d) | 2027-02-07 → 2027-02-12 (+5d) |  | 49d → 44d | M22 → M22, M21B | was named อาคารประกอบ: ห้องน้ำ / ห้องเก็บสารเคมี |
| M41 | ฐาน F1A 249 จุด รับพื้นถนน | 2027-01-28 → 2027-01-27 (-1d) | 2027-02-08 → 2027-02-07 (-1d) |  | 28d → 29d |  |  |
| M46 | รางระบายน้ำ คสล. พร้อมฝาปิด | 2027-02-01 → 2027-01-31 (-1d) | 2027-02-15 → 2027-02-14 (-1d) |  | 41d → 42d |  |  |
| M45 | ฐานหม้อแปลง | 2027-01-20 → 2027-01-22 (+2d) | 2027-01-25 → 2027-01-27 (+2d) |  | 62d → 60d |  |  |
| M52 | รื้อสิ่งชั่วคราวด้านเหนือ เทพื้นถนนส่วนใต้สิ่งชั่วคราว ทำความสะอาด ส่งมอบ + As-built |  | 2027-04-10 → 2027-04-13 (+3d) | 5d → 8d |  |  | was named รื้อถอนสิ่งชั่วคราว ทำความสะอาด ส่งมอบ + As-built |

## Version 4 (saved 2026-11-18)

Note of the change: Import external works from SketchUp R1 IFC

Last finish stays 2027-04-13.

Added:

| ID | Task | Duration | Start | Finish | Predecessors |
| --- | --- | --- | --- | --- | --- |
| M47 | ตอกเข็มกำแพงกันดิน/ค้ำยัน 0.18x0.18 ยาว 8 ม. 153 ต้น | 8d | 2027-01-27 | 2027-02-03 | M21C |
| M48 | คานหัวเข็ม กำแพงกันดิน 226 ม. ฐานค้ำยันและค้ำยัน 77 ชุด | 30d | 2027-01-30 | 2027-02-28 | M47 SS+3d |
| M49 | รั้วกำแพงด้านใต้ 81 ม. (คานคอดิน เสา ผนังก่อ ทับหลัง) | 15d | 2027-01-30 | 2027-02-13 | M41 SS+3d |

Changed:

| ID | Task | Predecessors |
| --- | --- | --- |
| M51 | ทดสอบระบบ ตรวจรับ แก้ไขงาน (Punch list) | M38, M42, M39, M35, M44, M43, M46, M37, M45, M26 → M38, M48, M49, M42, M39, M35, M44, M43, M46, M37, M45, M26 |

## Version 5 (saved 2026-11-18)

Note of the change: Cancel transformer pad; change retaining wall to L-wall

Last finish stays 2027-04-13.

Removed: M45 ฐานหม้อแปลง

Changed:

| ID | Task | Start | Finish | Duration | Total float | Predecessors | Other |
| --- | --- | --- | --- | --- | --- | --- | --- |
| M21B | ตอกเข็มอาคารประกอบ/อื่นๆ: F1P-1 11, ถังใต้ดิน 17 |  | 2027-01-18 → 2027-01-16 (-2d) | 6d → 4d | 44d → 46d |  | was named ตอกเข็มอาคารประกอบ/อื่นๆ: F1P-1 11, ถังใต้ดิน 17, หม้อแปลง 6, ฐานแนวเขต 16 |
| M26 | ถังเก็บน้ำใต้ดิน คสล. | 2027-01-19 → 2027-01-17 (-2d) | 2027-02-07 → 2027-02-05 (-2d) |  | 49d → 51d |  |  |
| M44 | อาคารประกอบ: ฐาน F1P-1 เสา คาน ห้องน้ำ / ห้องเก็บสารเคมี | 2027-01-19 → 2027-01-17 (-2d) | 2027-02-12 → 2027-02-10 (-2d) |  | 44d → 46d |  |  |
| M48 | กำแพงกันดิน L-wall 226 ม. (พื้นกว้าง 1.50 ม. + ผนังสูง 1.50 ม.) |  | 2027-02-28 → 2027-02-26 (-2d) | 30d → 28d | 28d → 30d |  | was named คานหัวเข็ม กำแพงกันดิน 226 ม. ฐานค้ำยันและค้ำยัน 77 ชุด |
| M51 | ทดสอบระบบ ตรวจรับ แก้ไขงาน (Punch list) |  |  |  |  | M38, M48, M49, M42, M39, M35, M44, M43, M46, M37, ฐานหม้อแปลง, M26 → M38, M48, M49, M42, M39, M35, M44, M43, M46, M37, M26 |  |
